# DeviceLoan MVP WBS

How a schedule from MS Project XML changed from version to version. A marks actual dates.

## Version 1 (saved 2026-10-23)

Note of the change: 阶段2 规划：范围与RTM、架构契约、WBS、进度与成本基线、风险质量计划、CCB评审与收口

| ID | WBS | Task | Duration | Start | Finish | Predecessors |
| --- | --- | --- | --- | --- | --- | --- |
| 1 |  | 1 启动 | 2.5d | 2026-11-02 | 2026-11-02 |  |
| 2 |  | 2 规划 | 4.5d | 2026-11-02 | 2026-11-02 |  |
| 3 |  | 3 执行 | 10.75d | 2026-11-02 | 2026-11-02 |  |
| 4 |  | 4 监控 | 8d | 2026-11-02 | 2026-11-02 |  |
| 5 | 5 | **5 收尾** | 1d | 2026-11-02 | 2026-11-02 |  |
| 6 |  | 商业论证与NPV初筛 | 0.5d | 2026-11-02 | 2026-11-02 |  |
| 7 |  | 项目章程 | 0.5d | 2026-11-02 | 2026-11-03 | 6 |
| 8 |  | 干系人登记与启动会 | 0.5d | 2026-11-03 | 2026-11-03 | 7 |
| 9 |  | 启动阶段评审 | 0.5d | 2026-11-03 | 2026-11-04 | 8 |
| 10 |  | 启动阶段收口与派单 | 0.5d | 2026-11-04 | 2026-11-04 | 9 |
| 11 |  | 范围说明书与需求追溯矩阵 | 0.75d | 2026-11-04 | 2026-11-04 | 9 |
| 12 |  | 架构与接口契约 | 0.75d | 2026-11-04 | 2026-11-05 | 11 |
| 13 |  | WBS与WBS词典 | 0.5d | 2026-11-05 | 2026-11-06 | 12 |
| 14 |  | 风险登记与质量计划 | 1d | 2026-11-05 | 2026-11-06 | 12 |
| 15 |  | 进度计划与关键路径分析 | 0.5d | 2026-11-06 | 2026-11-06 | 13, 10 |
| 16 |  | 成本基线与EVM口径 | 1d | 2026-11-06 | 2026-11-09 | 15 |
| 17 |  | 甘特图与Project XML | 0.5d | 2026-11-09 | 2026-11-10 | 16 |
| 18 |  | 规划基线评审 | 0.5d | 2026-11-10 | 2026-11-10 | 17, 14 |
| 19 |  | WP1账户与角色权限 | 2d | 2026-11-10 | 2026-11-12 | 18 |
| 20 |  | QA1验证账户与权限 | 0.75d | 2026-11-12 | 2026-11-13 | 19 |
| 21 |  | WP2设备目录与查询 | 1.25d | 2026-11-12 | 2026-11-13 | 19 |
| 22 |  | QA2验证设备查询 | 0.75d | 2026-11-13 | 2026-11-16 | 21 |
| 23 |  | WP3申请审批与冲突阻止 | 2d | 2026-11-13 | 2026-11-17 | 21 |
| 24 |  | QA3验证审批与冲突阻止 | 1d | 2026-11-17 | 2026-11-18 | 23 |
| 25 |  | WP4借出归还与逾期 | 1.5d | 2026-11-17 | 2026-11-19 | 23 |
| 26 |  | QA4验证借还生命周期 | 0.75d | 2026-11-19 | 2026-11-20 | 25 |
| 27 |  | WP5统计与审计日志 | 2.25d | 2026-11-19 | 2026-11-23 | 25 |
| 28 |  | QA5验证统计与审计 | 0.75d | 2026-11-23 | 2026-11-24 | 27 |
| 29 |  | 演示数据与演示脚本 | 1.25d | 2026-11-23 | 2026-11-24 | 27 |
| 30 |  | 执行期集成与演示准备 | 0.5d | 2026-11-24 | 2026-11-25 | 29 |
| 31 |  | EVM数据点1与偏差分析 | 0.5d | 2026-11-13 | 2026-11-16 | 21 |
| 32 |  | EVM数据点2与完工预测 | 0.5d | 2026-11-25 | 2026-11-25 | 31, 30 |
| 33 |  | 验收演示与UAT | 0.5d | 2026-11-25 | 2026-11-26 | 32 |
| 34 |  | 经验教训报告 | 0.5d | 2026-11-26 | 2026-11-26 | 33 |
| 35 |  | 最终报告与归档移交 | 0.5d | 2026-11-26 | 2026-11-26 | 33 |

## Version 2 (saved 2026-10-24)

Note of the change: 完成 MS Project 整日版 WBS 并验证导入：19.75 天，11/27 结束

Last finish stays 2026-11-26.

Added:

| ID | Task | Duration | Start | Finish |
| --- | --- | --- | --- | --- |
| 7 | **2 规划** | 4.5d | 2026-11-03 | 2026-11-10 |
| 16 | **3 执行** | 10.75d | 2026-11-10 | 2026-11-25 |
| 29 | **4 监控** | 8d | 2026-11-13 | 2026-11-25 |

Removed: 2 2 规划; 3 3 执行; 4 4 监控

Changed:

| ID | Task | Start | Finish | Other |
| --- | --- | --- | --- | --- |
| 1 | **1 启动** |  | 2026-11-02 → 2026-11-04 (+2d) |  |
| 2 | 商业论证与NPV初筛 |  |  | resources none → BA |
| 3 | 项目章程 |  | 2026-11-03 → 2026-11-02 (-1d) | resources none → BA |
| 4 | 干系人登记与启动会 | 2026-11-03 → 2026-11-02 (-1d) |  | resources none → BA |
| 5 | 启动阶段评审 |  | 2026-11-04 → 2026-11-03 (-1d) | resources none → CCB |
| 6 | 启动阶段收口与派单 | 2026-11-04 → 2026-11-03 (-1d) |  | resources none → PM |
| 8 | 范围说明书与需求追溯矩阵 | 2026-11-04 → 2026-11-03 (-1d) |  | resources none → BA |
| 9 | 架构与接口契约 |  |  | resources none → BA |
| 10 | WBS与WBS词典 |  | 2026-11-06 → 2026-11-05 (-1d) | resources none → BA |
| 11 | 风险登记与质量计划 |  |  | resources none → BA |
| 12 | 进度计划与关键路径分析 | 2026-11-06 → 2026-11-05 (-1d) |  | resources none → PM |
| 13 | 成本基线与EVM口径 |  |  | resources none → PM |
| 14 | 甘特图与Project XML |  | 2026-11-10 → 2026-11-09 (-1d) | resources none → PM |
| 15 | 规划基线评审 | 2026-11-10 → 2026-11-09 (-1d) |  | resources none → CCB |
| 17 | WP1账户与角色权限 |  |  | resources none → Dev |
| 18 | QA1验证账户与权限 |  |  | resources none → QA |
| 19 | WP2设备目录与查询 |  |  | resources none → Dev |
| 20 | QA2验证设备查询 |  |  | resources none → QA |
| 21 | WP3申请审批与冲突阻止 |  |  | resources none → Dev |
| 22 | QA3验证审批与冲突阻止 |  |  | resources none → QA |
| 23 | WP4借出归还与逾期 |  |  | resources none → Dev |
| 24 | QA4验证借还生命周期 |  | 2026-11-20 → 2026-11-19 (-1d) | resources none → QA |
| 25 | WP5统计与审计日志 |  |  | resources none → Dev |
| 26 | QA5验证统计与审计 |  |  | resources none → QA |
| 27 | 演示数据与演示脚本 |  |  | resources none → Dev |
| 28 | 执行期集成与演示准备 |  |  | resources none → PM |
| 30 | EVM数据点1与偏差分析 |  |  | resources none → PM |
| 31 | EVM数据点2与完工预测 |  |  | resources none → PM |
| 32 | **5 收尾** | 2026-11-02 → 2026-11-25 (+23d) | 2026-11-02 → 2026-11-26 (+24d) |  |
| 33 | 验收演示与UAT |  |  | resources none → PM |
| 34 | 经验教训报告 |  |  | resources none → BA |
| 35 | 最终报告与归档移交 |  |  | resources none → PM |
